# Residential Construction

Schedule from MS Project, 2017-08-01 to 2018-04-20.

## Calendars

- Standard: Mon-Fri 08:00-12:00, 13:00-17:00; Sat-Sun off. Exceptions (off unless hours are given): 2017-09-04 (Labour Day), 2017-10-09 (Thanksgiving Dat), 2017-12-25 (Christmas), 2017-12-26 (Boxing Day), 2018-01-01 (New Year's Day), 2018-02-19 (Family Day).

## Resources

| Resource |
| --- |
| Owner |
| Architect |
| Site Engineer |
| General Contractor |
| Labourer |
| Concrete contractor |
| Masonry Contractor |
| Site excavation contractor |
| Electric contractor |
| Plumbing contractor |
| Framing contractor |
| Roofing contractor |
| Heating and AC contractor |
| Insulation contractor |
| Drywell contractor |
| Painting contractor |
| Finish carpentry contractor |
| Flooring contractor |
| Appliance contractor |
| Landscape contractor |
| Fancing contractor |
| Maid service |

## Schedule

| ID | WBS | Task | Type | Duration | Start | Finish | Predecessors | Baseline start | Baseline finish | Baseline duration | Total slack |
| --- | --- | --- | --- | --- | --- | --- | --- | --- | --- | --- | --- |
| 1 | 1 | **Single Family House - Architect Design (3,000 square feet with full basement)** |  | 183d | 2017-08-01 | 2018-04-20 |  | 2017-08-01 | 2018-03-08 | 152d | 0d |
| 2 | 1.1 | **General Conditions** |  | 21d | 2017-08-01 | 2017-08-29 |  | 2017-08-01 | 2017-08-29 | 21d | 0d |
| 3 | 1.1.1 | Finalize plans and develop estimate with owner, architect | milestone | 20d | 2017-08-01 | 2017-08-28 |  | 2017-08-01 | 2017-08-28 | 20d | 0d |
| 4 | 1.1.2 | Sign contract and notice to proceed |  | 1d | 2017-08-29 | 2017-08-29 | 3 | 2017-08-29 | 2017-08-29 | 1d | 0d |
| 5 | 1.1.3 | **Apply for Permits** |  | 0d | 2017-08-29 | 2017-08-29 |  | 2017-08-29 | 2017-08-29 | 0d | 0d |
| 6 | 1.1.3.1 | Secure foundation permit | milestone | 0d | 2017-08-29 | 2017-08-29 | 4 | 2017-08-29 | 2017-08-29 | 0d | 0d |
| 7 | 1.1.3.2 | Secure framing permit | milestone | 0d | 2017-08-29 | 2017-08-29 | 4 | 2017-08-29 | 2017-08-29 | 0d | 0d |
| 8 | 1.1.3.3 | Secure electrical permit | milestone | 0d | 2017-08-29 | 2017-08-29 | 4 | 2017-08-29 | 2017-08-29 | 0d | 0d |
| 9 | 1.1.3.4 | Secure plumbing permit | milestone | 0d | 2017-08-29 | 2017-08-29 | 4 | 2017-08-29 | 2017-08-29 | 0d | 0d |
| 10 | 1.1.3.5 | Secure HVAC permit | milestone | 0d | 2017-08-29 | 2017-08-29 | 4 | 2017-08-29 | 2017-08-29 | 0d | 0d |
| 11 | 1.1.3.6 | Secure miscellaneous permits | milestone | 0d | 2017-08-29 | 2017-08-29 | 4 | 2017-08-29 | 2017-08-29 | 0d | 0d |
| 12 | 1.2 | **Site Work** |  | 3d | 2017-08-30 | 2017-09-01 |  | 2017-08-30 | 2017-09-01 | 3d | 0d |
| 13 | 1.2.1 | Clear and grub lot |  | 1d | 2017-08-30 | 2017-08-30 | 6, 7, 8, 9, 10, 11 | 2017-08-30 | 2017-08-30 | 1d | 0d |
| 14 | 1.2.2 | Install temporary power service | milestone | 1d | 2017-08-31 | 2017-08-31 | 13 | 2017-08-31 | 2017-08-31 | 1d | 0d |
| 15 | 1.2.3 | Install underground utilities | milestone | 1d | 2017-09-01 | 2017-09-01 | 14 | 2017-09-01 | 2017-09-01 | 1d | 0d |
| 16 | 1.3 | **Foundation** |  | 50d | 2017-09-05 | 2017-11-14 |  | 2017-09-05 | 2017-11-02 | 42d | 0d |
| 17 | 1.3.1 | Excavate for foundations | milestone | 4d | 2017-09-05 | 2017-09-08 | 15 | 2017-09-05 | 2017-09-07 | 3d | 0d |
| 18 | 1.3.2 | Form basement walls | milestone | 14d | 2017-09-11 | 2017-09-28 | 17 | 2017-09-08 | 2017-09-26 | 13d | 0d |
| 19 | 1.3.3 | Place concrete for foundations & basement walls | milestone | 13d | 2017-09-29 | 2017-10-18 | 18 | 2017-09-27 | 2017-10-13 | 12d | 0d |
| 20 | 1.3.4 | Cure basement walls for 7 days |  | 8d | 2017-10-19 | 2017-10-30 | 19 | 2017-10-16 | 2017-10-24 | 7d | 0d |
| 21 | 1.3.5 | Strip basement wall forms |  | 3d | 2017-10-31 | 2017-11-02 | 20 | 2017-10-25 | 2017-10-26 | 2d | 0d |
| 22 | 1.3.6 | Waterproof/insulate basement walls |  | 3d | 2017-11-03 | 2017-11-07 | 21 | 2017-10-27 | 2017-10-30 | 2d | 0d |
| 23 | 1.3.7 | Perform foundation inspection |  | 2d | 2017-11-08 | 2017-11-09 | 22, 17 | 2017-10-31 | 2017-10-31 | 1d | 0d |
| 24 | 1.3.8 | Backfill foundation |  | 3d | 2017-11-10 | 2017-11-14 | 23 | 2017-11-01 | 2017-11-02 | 2d | 0d |

Notes:
- 3: This is First Milestone for Project
- 14: This is second milestone

| ID | WBS | Task | Type | Duration | Start | Finish | Predecessors | Baseline start | Baseline finish | Baseline duration | Total slack | Free slack |
| --- | --- | --- | --- | --- | --- | --- | --- | --- | --- | --- | --- | --- |
| 25 | 1.4 | **Framing** |  | 34d | 2017-11-15 | 2018-01-04 |  | 2017-11-03 | 2017-12-04 | 22d | 0d |  |
| 26 | 1.4.1 | Install 1st floor joists |  | 4d | 2017-11-15 | 2017-11-20 | 24 | 2017-11-03 | 2017-11-06 | 2d | 0d |  |
| 27 | 1.4.2 | Lay 1st floor decking |  | 3d | 2017-11-21 | 2017-11-23 | 26 | 2017-11-07 | 2017-11-08 | 2d | 0d |  |
| 28 | 1.4.3 | Frame 1st floor walls |  | 5d | 2017-11-24 | 2017-11-30 | 27 | 2017-11-09 | 2017-11-14 | 4d | 0d |  |
| 29 | 1.4.4 | Frame 1st floor corners |  | 3d | 2017-12-01 | 2017-12-05 | 28 | 2017-11-15 | 2017-11-15 | 1d | 0d |  |
| 30 | 1.4.5 | Install 2nd floor joists |  | 3d | 2017-12-06 | 2017-12-08 | 29 | 2017-11-16 | 2017-11-17 | 2d | 0d |  |
| 31 | 1.4.6 | Frame 2nd floor decking |  | 3d | 2017-12-11 | 2017-12-13 | 30 | 2017-11-20 | 2017-11-21 | 2d | 0d |  |
| 32 | 1.4.7 | Frame 2nd floor walls |  | 4d | 2017-12-14 | 2017-12-19 | 31 | 2017-11-22 | 2017-11-24 | 3d | 0d |  |
| 33 | 1.4.8 | Frame 2nd floor corners |  | 3d | 2017-12-20 | 2017-12-22 | 32 | 2017-11-27 | 2017-11-28 | 2d | 0d |  |
| 34 | 1.4.9 | Complete roof framing |  | 4d | 2017-12-27 | 2018-01-02 | 33 | 2017-11-29 | 2017-12-01 | 3d | 0d |  |
| 35 | 1.4.10 | Conduct framing inspection |  | 2d | 2018-01-03 | 2018-01-04 | 34 | 2017-12-04 | 2017-12-04 | 1d | 0d |  |
| 36 | 1.5 | **Dry In** |  | 29d | 2018-01-03 | 2018-02-12 |  | 2017-12-04 | 2018-01-05 | 22d | 0d |  |
| 37 | 1.5.1 | Install 1st floor sheathing | milestone | 4d | 2018-01-05 | 2018-01-10 | 35 | 2017-12-05 | 2017-12-07 | 3d | 0d |  |
| 38 | 1.5.2 | Install 2nd floor sheathing | milestone | 4d | 2018-01-11 | 2018-01-16 | 37 | 2017-12-08 | 2017-12-12 | 3d | 0d |  |
| 39 | 1.5.3 | Install roof decking | milestone | 4d | 2018-01-03 | 2018-01-08 | 34 | 2017-12-04 | 2017-12-06 | 3d | 6d | 0d |
| 40 | 1.5.4 | Install felt, flashing and shingles |  | 4d | 2018-01-24 | 2018-01-29 | 48 | 2017-12-20 | 2017-12-22 | 3d | 0d |  |
| 41 | 1.5.5 | Hang 1st floor exterior doors |  | 2d | 2018-01-30 | 2018-01-31 | 40 | 2017-12-27 | 2017-12-27 | 1d | 0d |  |
| 42 | 1.5.6 | Install 1st floor windows |  | 4d | 2018-02-01 | 2018-02-06 | 41 | 2017-12-28 | 2018-01-02 | 3d | 0d |  |
| 43 | 1.5.7 | Install 2nd floor windows |  | 4d | 2018-02-07 | 2018-02-12 | 42 | 2018-01-03 | 2018-01-05 | 3d | 0d |  |
| 44 | 1.6 | **Exterior Finishes** |  | 22d | 2018-02-13 | 2018-03-15 |  | 2018-01-08 | 2018-02-01 | 19d | 6d |  |
| 45 | 1.6.1 | Complete exterior brick |  | 17d | 2018-02-13 | 2018-03-08 | 43 | 2018-01-08 | 2018-01-29 | 16d | 6d | 0d |
| 46 | 1.6.2 | Complete exterior siding |  | 5d | 2018-03-09 | 2018-03-15 | 45 | 2018-01-30 | 2018-02-01 | 3d | 6d | 0d |
| 47 | 1.7 | **Utility Rough-B97Ins and Complete Concrete** |  | 23d | 2018-01-09 | 2018-02-08 |  | 2017-12-07 | 2018-01-09 | 21d | 6d |  |
| 48 | 1.7.1 | Rough-in plumbing |  | 5d | 2018-01-17 | 2018-01-23 | 39, 38 | 2017-12-13 | 2017-12-19 | 5d | 0d |  |
| 49 | 1.7.2 | Conduct rough-in plumbing inspection |  | 1d | 2018-01-24 | 2018-01-24 | 48 | 2017-12-20 | 2017-12-20 | 1d | 29d | 0d |
| 50 | 1.7.3 | Place concrete for basement floor |  | 11d | 2018-01-25 | 2018-02-08 | 49 | 2017-12-21 | 2018-01-09 | 11d | 50d |  |
| 51 | 1.7.4 | Rough-in electrical |  | 5d | 2018-01-17 | 2018-01-23 | 39, 38 | 2017-12-13 | 2017-12-19 | 5d | 10d | 0d |
| 52 | 1.7.5 | Conduct rough-in electrical inspection |  | 1d | 2018-01-24 | 2018-01-24 | 51 | 2017-12-20 | 2017-12-20 | 1d | 10d | 0d |
| 53 | 1.7.6 | Rough-in HVAC |  | 3d | 2018-01-25 | 2018-01-29 | 52 | 2017-12-21 | 2017-12-27 | 3d | 10d | 0d |
| 54 | 1.7.7 | Conduct rough-in HVAC inspection |  | 1d | 2018-01-30 | 2018-01-30 | 53 | 2017-12-28 | 2017-12-28 | 1d | 33d |  |
| 55 | 1.7.8 | Rough-in communication - phone, cable, computer, alarm |  | 2d | 2018-01-09 | 2018-01-10 | 39 | 2017-12-07 | 2017-12-08 | 2d | 23d |  |

Notes:
- 47: This summary task is third Milestone

| ID | WBS | Task | Duration | Start | Finish | Predecessors | Baseline start | Baseline finish | Baseline duration | Total slack | Free slack |
| --- | --- | --- | --- | --- | --- | --- | --- | --- | --- | --- | --- |
| 56 | 1.8 | **Interior Finishes** | 35d | 2018-02-13 | 2018-04-03 |  | 2018-01-08 | 2018-02-16 | 30d | 0d |  |
| 57 | 1.8.1 | **Insulation** | 15d | 2018-02-13 | 2018-03-06 |  | 2018-01-08 | 2018-01-22 | 11d | 0d |  |
| 58 | 1.8.1.1 | Place wall insulation - 1st floor | 1d | 2018-02-13 | 2018-02-13 | 37, 43, 55, 53, 51, 38 | 2018-01-08 | 2018-01-08 | 1d | 0d |  |
| 59 | 1.8.1.2 | Place wall insulation - 2nd floor | 1d | 2018-02-14 | 2018-02-14 | 58 | 2018-01-09 | 2018-01-09 | 1d | 30d | 5d |
| 60 | 1.8.1.3 | Place ceiling insulation - 2nd floor | 1d | 2018-03-05 | 2018-03-05 | 66, 59 | 2018-01-19 | 2018-01-19 | 1d | 25d | 0d |
| 61 | 1.8.1.4 | Conduct insulation inspection | 1d | 2018-03-06 | 2018-03-06 | 60 | 2018-01-22 | 2018-01-22 | 1d | 25d |  |
| 62 | 1.8.2 | **Drywall** | 14d | 2018-02-14 | 2018-03-06 |  | 2018-01-09 | 2018-01-19 | 9d | 0d |  |
| 63 | 1.8.2.1 | Install drywall - 1st floor walls | 3d | 2018-02-14 | 2018-02-16 | 58 | 2018-01-09 | 2018-01-10 | 2d | 0d |  |
| 64 | 1.8.2.2 | Install drywall - 1st floor overhead | 3d | 2018-02-20 | 2018-02-22 | 63 | 2018-01-11 | 2018-01-12 | 2d | 0d |  |
| 65 | 1.8.2.3 | Install drywall 2nd floor walls | 3d | 2018-02-23 | 2018-02-27 | 64, 59 | 2018-01-15 | 2018-01-16 | 2d | 25d | 0d |
| 66 | 1.8.2.4 | Install drywall 2nd floor overhead | 3d | 2018-02-28 | 2018-03-02 | 65 | 2018-01-17 | 2018-01-18 | 2d | 25d | 0d |
| 67 | 1.8.2.5 | Tape and float 1st floor drywall | 2d | 2018-02-23 | 2018-02-26 | 64 | 2018-01-15 | 2018-01-15 | 1d | 0d |  |
| 68 | 1.8.2.6 | Tape and float 2nd floor drywall | 2d | 2018-03-05 | 2018-03-06 | 66, 67 | 2018-01-19 | 2018-01-19 | 1d | 33d |  |
| 69 | 1.8.3 | **Paint and Wallpaper** | 18d | 2018-02-27 | 2018-03-22 |  | 2018-01-16 | 2018-02-07 | 17d | 0d |  |
| 70 | 1.8.3.1 | Texture all except entry and kitchen - 1st floor | 1d | 2018-02-27 | 2018-02-27 | 67 | 2018-01-16 | 2018-01-16 | 1d | 0d |  |
| 71 | 1.8.3.2 | Paint all except entry and kitchen - 1st floor | 1d | 2018-02-28 | 2018-02-28 | 70 | 2018-01-17 | 2018-01-17 | 1d | 0d |  |
| 72 | 1.8.3.3 | Hang wallpaper entry and kitchen - 1st floor | 1d | 2018-03-01 | 2018-03-01 | 71 | 2018-01-18 | 2018-01-18 | 1d | 0d |  |
| 73 | 1.8.3.4 | Texture all - 2nd floor | 1d | 2018-02-28 | 2018-02-28 | 70 | 2018-01-17 | 2018-01-17 | 1d | 36d | 0d |
| 74 | 1.8.3.5 | Paint all - 2nd floor | 1d | 2018-03-01 | 2018-03-01 | 73 | 2018-01-18 | 2018-01-18 | 1d | 36d |  |
| 75 | 1.8.3.6 | Paint exterior siding & trim work | 5d | 2018-03-16 | 2018-03-22 | 46 | 2018-02-02 | 2018-02-07 | 4d | 6d | 0d |
| 76 | 1.8.4 | **Cabinets** | 8d | 2018-03-02 | 2018-03-13 |  | 2018-01-19 | 2018-01-26 | 6d | 0d |  |
| 77 | 1.8.4.1 | Install 1st floor - kitchen cabinets | 4d | 2018-03-02 | 2018-03-07 | 72 | 2018-01-19 | 2018-01-22 | 2d | 0d |  |
| 78 | 1.8.4.2 | Install 1st floor - master bath and guest cabinets | 1d | 2018-03-08 | 2018-03-08 | 77 | 2018-01-23 | 2018-01-23 | 1d | 0d |  |
| 79 | 1.8.4.3 | Install 2nd floor - hall bath and private bath cabinets | 1d | 2018-03-09 | 2018-03-09 | 78 | 2018-01-24 | 2018-01-24 | 1d | 1d | 0d |
| 80 | 1.8.4.4 | Install chair rails, crown moldings, trim | 2d | 2018-03-12 | 2018-03-13 | 79 | 2018-01-25 | 2018-01-26 | 2d | 28d |  |

| ID | WBS | Task | Duration | Start | Finish | Predecessors | Baseline start | Baseline finish | Baseline duration | Total slack | Free slack |
| --- | --- | --- | --- | --- | --- | --- | --- | --- | --- | --- | --- |
| 81 | 1.8.5 | **Finish Plumbing** | 6d | 2018-03-08 | 2018-03-15 |  | 2018-01-23 | 2018-01-30 | 6d | 0d |  |
| 82 | 1.8.5.1 | Complete 1st floor - kitchen plumbing | 1d | 2018-03-08 | 2018-03-08 | 77, 49 | 2018-01-23 | 2018-01-23 | 1d | 0d |  |
| 83 | 1.8.5.2 | Complete 1st floor - master bath and guest plumbing | 2d | 2018-03-09 | 2018-03-12 | 82, 78 | 2018-01-24 | 2018-01-25 | 2d | 0d |  |
| 84 | 1.8.5.3 | Complete 2nd floor - hall bath and private bath plumbing | 2d | 2018-03-13 | 2018-03-14 | 83, 79 | 2018-01-26 | 2018-01-29 | 2d | 0d |  |
| 85 | 1.8.5.4 | Conduct finish plumbing inspection | 1d | 2018-03-15 | 2018-03-15 | 84 | 2018-01-30 | 2018-01-30 | 1d | 0d |  |
| 86 | 1.8.6 | **Finish Electrical** | 3d | 2018-03-15 | 2018-03-19 |  | 2018-01-30 | 2018-02-01 | 3d | 1d |  |
| 87 | 1.8.6.1 | Complete 1st floor circuits to service panel | 1d | 2018-03-15 | 2018-03-15 | 84, 52 | 2018-01-30 | 2018-01-30 | 1d | 3d | 0d |
| 88 | 1.8.6.2 | Complete 2nd floor circuits to service panel | 1d | 2018-03-16 | 2018-03-16 | 87 | 2018-01-31 | 2018-01-31 | 1d | 3d | 0d |
| 89 | 1.8.6.3 | Conduct finish electrical inspection | 1d | 2018-03-19 | 2018-03-19 | 88 | 2018-02-01 | 2018-02-01 | 1d | 3d |  |
| 90 | 1.8.6.4 | Complete communications wiring - phone, cable, computer, alarm | 2d | 2018-03-16 | 2018-03-19 | 85 | 2018-01-31 | 2018-02-01 | 2d | 0d |  |
| 91 | 1.8.7 | **Finish HVAC** | 3d | 2018-03-20 | 2018-03-22 |  | 2018-02-02 | 2018-02-06 | 3d | 0d |  |
| 92 | 1.8.7.1 | Complete 1st floor - zone 1 HVAC | 1d | 2018-03-20 | 2018-03-20 | 90, 54 | 2018-02-02 | 2018-02-02 | 1d | 0d |  |
| 93 | 1.8.7.2 | Complete 2nd floor - zone 2 HVAC | 1d | 2018-03-21 | 2018-03-21 | 92 | 2018-02-05 | 2018-02-05 | 1d | 0d |  |
| 94 | 1.8.7.3 | Conduct HVAC inspection | 1d | 2018-03-22 | 2018-03-22 | 93 | 2018-02-06 | 2018-02-06 | 1d | 0d |  |
| 95 | 1.8.8 | **Carpet, Tile and Appliances** | 8d | 2018-03-23 | 2018-04-03 |  | 2018-02-07 | 2018-02-16 | 8d | 0d |  |
| 96 | 1.8.8.1 | Tile entry, kitchen and baths | 3d | 2018-03-23 | 2018-03-27 | 89, 94 | 2018-02-07 | 2018-02-09 | 3d | 0d |  |
| 97 | 1.8.8.2 | Carpet 1st floor | 2d | 2018-03-28 | 2018-03-29 | 96 | 2018-02-12 | 2018-02-13 | 2d | 0d |  |
| 98 | 1.8.8.3 | Carpet 2nd floor | 2d | 2018-03-30 | 2018-04-02 | 97 | 2018-02-14 | 2018-02-15 | 2d | 0d |  |
| 99 | 1.8.8.4 | Install appliances | 1d | 2018-04-03 | 2018-04-03 | 98 | 2018-02-16 | 2018-02-16 | 1d | 0d |  |
| 100 | 1.9 | **Landscaping and Grounds Work** | 13d | 2018-03-23 | 2018-04-10 |  | 2018-02-08 | 2018-02-26 | 12d | 0d |  |
| 101 | 1.9.1 | Pour concrete driveway and sidewalks | 2d | 2018-03-23 | 2018-03-26 | 75 | 2018-02-08 | 2018-02-09 | 2d | 6d |  |
| 102 | 1.9.2 | Install backyard fence | 2d | 2018-04-04 | 2018-04-05 | 99, 101 | 2018-02-20 | 2018-02-21 | 2d | 0d |  |
| 103 | 1.9.3 | Sod and complete plantings - front yard | 2d | 2018-04-06 | 2018-04-09 | 102 | 2018-02-22 | 2018-02-23 | 2d | 0d |  |
| 104 | 1.9.4 | Sod and complete plantings - backyard | 1d | 2018-04-10 | 2018-04-10 | 103 | 2018-02-26 | 2018-02-26 | 1d | 0d |  |

| ID | WBS | Task | Duration | Start | Finish | Predecessors | Baseline start | Baseline finish | Baseline duration | Total slack | Constraint |
| --- | --- | --- | --- | --- | --- | --- | --- | --- | --- | --- | --- |
| 105 | 1.10 | **Final Acceptance** | 8d | 2018-04-11 | 2018-04-20 |  | 2018-02-27 | 2018-03-08 | 8d | 0d |  |
| 106 | 1.10.1 | Complete final inspection for certificate of occupancy | 1d | 2018-04-11 | 2018-04-11 | 104, 94, 89, 85, 61, 8 | 2018-02-27 | 2018-02-27 | 1d | 0d |  |
| 107 | 1.10.2 | Cleanup for occupancy | 1d | 2018-04-12 | 2018-04-12 | 99, 106 | 2018-02-28 | 2018-02-28 | 1d | 0d |  |
| 108 | 1.10.3 | Perform final walk-through inspection | 1d | 2018-04-13 | 2018-04-13 | 107 | 2018-03-01 | 2018-03-01 | 1d | 0d |  |
| 109 | 1.10.4 | Complete punch list items | 5d | 2018-04-16 | 2018-04-20 | 108 | 2018-03-02 | 2018-03-08 | 5d | 0d |  |
| 110 | 1.11 | PM activities | 183d | 2017-08-01 | 2018-04-20 |  |  |  |  | 0d | finish no earlier than 2018-04-20 |
| 111 | 1.12 | **PM Meetings** | 170d | 2017-08-01 | 2018-04-03 |  |  |  |  | 13d |  |
| 112 | 1.12.1 | PM Meetings 1 | 1d | 2017-08-01 | 2017-08-01 |  |  |  |  | 182d | start no earlier than 2017-08-01 |
| 113 | 1.12.2 | PM Meetings 2 | 1d | 2017-09-05 | 2017-09-05 |  |  |  |  | 158d | start no earlier than 2017-09-05 |
| 114 | 1.12.3 | PM Meetings 3 | 1d | 2017-10-03 | 2017-10-03 |  |  |  |  | 138d | start no earlier than 2017-10-03 |
| 115 | 1.12.4 | PM Meetings 4 | 1d | 2017-11-07 | 2017-11-07 |  |  |  |  | 114d | start no earlier than 2017-11-07 |
| 116 | 1.12.5 | PM Meetings 5 | 1d | 2017-12-05 | 2017-12-05 |  |  |  |  | 94d | start no earlier than 2017-12-05 |
| 117 | 1.12.6 | PM Meetings 6 | 1d | 2018-01-02 | 2018-01-02 |  |  |  |  | 77d | start no earlier than 2018-01-02 |
| 118 | 1.12.7 | PM Meetings 7 | 1d | 2018-02-06 | 2018-02-06 |  |  |  |  | 52d | start no earlier than 2018-02-06 |
| 119 | 1.12.8 | PM Meetings 8 | 1d | 2018-03-06 | 2018-03-06 |  |  |  |  | 33d | start no earlier than 2018-03-06 |
| 120 | 1.12.9 | PM Meetings 9 | 1d | 2018-04-03 | 2018-04-03 |  |  |  |  | 13d | start no earlier than 2018-04-03 |

Notes:
- 110: This Hammok Taks or Overhead task
